# The Indigo Project Group 3 (Resources Added)

Schedule from MS Project, 2025-01-06 to 2026-07-30, costs in $.

## Calendars

- Standard: Mon-Fri 08:00-12:00, 13:00-17:00; Sat-Sun off. Exceptions (off unless hours are given): 2025-01-20 to 2034-01-16 (Martin Luther King Jr. Day, recurring), 2025-05-26 to 2034-05-22 (Memorial Day, recurring), 2025-06-19 to 2034-06-19 (Juneteenth, recurring), 2025-07-04 to 2034-07-04 (Independence Day, recurring), 2025-09-01 to 2034-09-04 (Labor Day, recurring), 2025-10-13 to 2034-10-09 (Indigenous Peoples' Day, recurring), 2025-11-11 to 2034-11-11 (Veterans Day, recurring), 2025-11-27 to 2034-11-23 (Thanksgiving Day, recurring), 2025-11-28 to 2034-11-24 (Day After Thanksgiving, recurring), 2025-12-25 to 2034-12-25 (Christmas Day, recurring), 2025-12-26 to 2034-12-26 (Day After Christmas, recurring), 2026-01-01 to 2035-01-01 (New Year's Day, recurring).

## Resources

| Resource | Rate |
| --- | --- |
| Design Engineer | 116.25 |
| Development Engineer | 103.5 |
| Industrial Engineer | 89.7 |
| Marketing Specialist | 77.05 |
| Purchasing Agent | 64.4 |

## Schedule

| ID | WBS | Task | Type | Duration | Start | Finish | Predecessors | Total slack | Resources | Work | Cost |
| --- | --- | --- | --- | --- | --- | --- | --- | --- | --- | --- | --- |
| 1 | 1 | **Indigo Development Project** |  | 393.75d | 2025-01-06 | 2026-07-30 |  | 0d |  | 7368h | 686,508.4 |
| 2 | 1.1 | **Research and Development** |  | 86.25d | 2025-01-06 | 2025-05-07 |  | 0d |  | 2520h | 226,682 |
| 3 | 1.1.1 | Market analysis |  | 6.25d | 2025-01-06 | 2025-01-14 |  | 0d | Marketing Specialist [400%] | 200h | 15,410 |
| 4 | 1.1.2 | Product design |  | 40d | 2025-01-14 | 2025-03-12 | 3 | 0d | Design Engineer [400%]; Development Engineer [200%]; Industrial Engineer; Marketing Specialist; Purchasing Agent | 1600h | 144,288 |
| 5 | 1.1.3 | Manufacturing study |  | 10d | 2025-01-14 | 2025-01-29 | 3 | 30d | Development Engineer [200%]; Industrial Engineer [400%] | 320h | 30,912 |
| 6 | 1.1.4 | Product design selection |  | 40d | 2025-03-12 | 2025-05-07 | 4, 5 | 0d | Design Engineer [300%]; Development Engineer [200%]; Industrial Engineer [200%]; Marketing Specialist [200%]; Purchasing Agent [25%] | 400h | 36,072 |
| 7 | 1.1.5 | Reasech and Development Complete | milestone | 0d | 2025-05-07 | 2025-05-07 | 6 | 307.5d |  |  |  |
| 8 | 1.2 | **Product Testing** |  | 217.5d | 2025-05-07 | 2026-03-24 |  | 0d |  | 3800h | 358,754 |
| 9 | 1.2.1 | Detailed marketing plan |  | 3.75d | 2025-05-07 | 2025-05-12 | 6 | 302.75d | Marketing Specialist [400%] | 120h | 9,246 |
| 10 | 1.2.2 | Manufacturing process |  | 30d | 2025-05-07 | 2025-06-20 | 6 | 175d | Design Engineer; Development Engineer [200%]; Industrial Engineer [400%] | 720h | 74,268 |
| 11 | 1.2.3 | Detailed product design |  | 200d | 2025-05-07 | 2026-02-27 | 6 | 0d | Design Engineer [400%]; Development Engineer [200%]; Industrial Engineer [200%]; Marketing Specialist [200%]; Purchasing Agent [25%] | 2000h | 180,360 |
| 12 | 1.2.4 | Test prototype |  | 5d | 2026-02-27 | 2026-03-06 | 11 | 0d | Design Engineer [300%]; Development Engineer [200%] | 160h | 17,580 |
| 13 | 1.2.5 | Finalized product design |  | 12.5d | 2026-03-06 | 2026-03-24 | 10, 12 | 0d | Design Engineer [300%]; Development Engineer [300%]; Industrial Engineer [200%]; Marketing Specialist [200%] | 800h | 77,300 |
| 14 | 1.2.6 | Product Testing Complete | milestone | 0d | 2026-03-24 | 2026-03-24 | 13 | 90d |  |  |  |
| 15 | 1.3 | **Product Execution** |  | 89d | 2026-03-24 | 2026-07-29 |  | 0d |  | 1008h | 97,465.2 |
| 16 | 1.3.1 | Order components |  | 7d | 2026-03-24 | 2026-04-02 | 13 | 27d | Purchasing Agent | 56h | 3,606.4 |
| 17 | 1.3.2 | Order production equipment |  | 14d | 2026-03-24 | 2026-04-13 | 13 | 0d | Purchasing Agent | 112h | 7,212.8 |
| 18 | 1.3.3 | Install production equipment |  | 35d | 2026-06-09 | 2026-07-29 | 16FS+20d, 17FS+40d | 0d | Design Engineer; Development Engineer [300%]; Industrial Engineer [400%] | 840h | 86,646 |
| 19 | 1.4 | Closing celebration |  | 1d | 2026-07-29 | 2026-07-30 | 9, 18 | 0d | Design Engineer [400%]; Development Engineer [400%]; Industrial Engineer [400%]; Marketing Specialist [400%]; Purchasing Agent | 40h | 3,607.2 |
